# WS_Project_Schedule_v1.0_EN

Schedule from MS Project, 2016-09-05 to 2016-12-16.

## Calendars

- Standard: Mon-Fri 08:00-12:00, 13:00-17:00; Sat-Sun off.

## Resources

| Resource |
| --- |
| Team |
| NghiaDT |
| DuyTN |
| DevTeam |
| DesignTeam |
| TuanDV |
| NhienLH |
| TuanHA |
| 49 |
| TestTeam |

## Schedule

| ID | WBS | Task | Type | Duration | Start | Finish | Predecessors | Total slack | Free slack | Resources | Work |
| --- | --- | --- | --- | --- | --- | --- | --- | --- | --- | --- | --- |
| 1 | 1 | **WingS (WS)** |  | 75d | 2016-09-05 | 2016-12-16 |  |  |  |  | 1904h |
| 2 | 1.1 | **Initiation** |  | 11d | 2016-09-05 | 2016-09-19 |  | 1d | 0d |  | 284h |
| 3 | 1.1.1 | Form up team roles |  | 0.5d | 2016-09-05 | 2016-09-05 |  | 12d | 0d | Team | 4h |
| 4 | 1.1.2 | Select project idea |  | 0.5d | 2016-09-05 | 2016-09-05 | 3 | 12d |  | Team | 4h |
| 5 | 1.1.3 | **Develop project idea** |  | 1d | 2016-09-06 | 2016-09-06 |  |  |  |  | 8h |
| 6 | 1.1.3.1 | Define project scope |  | 0.5d | 2016-09-06 | 2016-09-06 |  | 0d |  | Team | 4h |
| 7 | 1.1.3.2 | Define project features |  | 0.5d | 2016-09-06 | 2016-09-06 | 6 | 0d |  | Team | 4h |
| 8 | 1.1.4 | **Project Introduction** |  | 3d | 2016-09-07 | 2016-09-09 |  |  |  |  | 24h |
| 9 | 1.1.4.1 | Create Project Introduction |  | 2d | 2016-09-07 | 2016-09-08 |  | 0d |  | DuyTN | 16h |
| 10 | 1.1.4.2 | Review Project Introduction |  | 0.5d | 2016-09-09 | 2016-09-09 | 9 | 0d |  | NghiaDT | 4h |
| 11 | 1.1.4.3 | Update Project Introduction |  | 0.5d | 2016-09-09 | 2016-09-09 | 10 | 0d |  | DuyTN | 4h |
| 12 | 1.1.4.4 | Complete Project Introduction | milestone | 0d | 2016-09-09 | 2016-09-09 | 11 | 0d |  |  |  |
| 13 | 1.1.5 | Kick-off meeting |  | 1d | 2016-09-12 | 2016-09-12 | 8 | 2d | 0d | Team | 8h |
| 14 | 1.1.6 | **Environment** |  | 2d | 2016-09-08 | 2016-09-09 |  |  |  |  | 16h |
| 15 | 1.1.6.1 | Create guideline to install and use tools & environments |  | 0.5d | 2016-09-08 | 2016-09-08 |  | 0d |  | NghiaDT | 4h |
| 16 | 1.1.6.2 | **Install tools & environments** |  | 1d | 2016-09-08 | 2016-09-09 | 15 | 0d |  |  | 8h |
| 17 | 1.1.6.2.1 | Install TortoiseGit |  | 0.5h | 2016-09-08 | 2016-09-08 |  | 0d |  | Team | 0.5h |
| 18 | 1.1.6.2.2 | Install Github Destop |  | 0.5h | 2016-09-08 | 2016-09-08 | 17 | 0d |  | Team | 0.5h |
| 19 | 1.1.6.2.3 | Install Visual Studio 2013 |  | 3h | 2016-09-08 | 2016-09-08 | 18 | 0d |  | Team | 3h |
| 20 | 1.1.6.2.4 | Install Microsoft SQL Server 2008 |  | 2h | 2016-09-09 | 2016-09-09 | 19 | 0d |  | Team | 2h |
| 21 | 1.1.6.2.5 | Install Microsoft Project 2013 |  | 2h | 2016-09-09 | 2016-09-09 | 20 | 0d |  | Team | 2h |
| 22 | 1.1.6.3 | Trainning using tools & environments |  | 0.5d | 2016-09-09 | 2016-09-09 | 16 | 0d |  | Team | 4h |
| 23 | 1.1.7 | **Technology Research** |  | 5d | 2016-09-12 | 2016-09-16 | 14 | 3d |  |  | 120h |
| 24 | 1.1.7.1 | Study .net MVC 5 |  | 5d | 2016-09-12 | 2016-09-16 |  | 3d |  | DevTeam | 40h |
| 25 | 1.1.7.2 | Study AngularJS, Ajax, Javascript |  | 5d | 2016-09-12 | 2016-09-16 |  | 3d |  | DevTeam | 40h |
| 26 | 1.1.7.3 | Study Bootstraps, HTML5, CSS3 |  | 5d | 2016-09-12 | 2016-09-16 |  | 3d |  | DesignTeam | 40h |

| ID | WBS | Task | Type | Duration | Start | Finish | Predecessors | Total slack | Free slack | Resources | Work |
| --- | --- | --- | --- | --- | --- | --- | --- | --- | --- | --- | --- |
| 27 | 1.1.8 | **Project Plan** |  | 4.5d | 2016-09-13 | 2016-09-19 | 13 | 2d | 0d |  | 60h |
| 28 | 1.1.8.1 | Create Project Plan in MS Word |  | 1.5d | 2016-09-13 | 2016-09-14 |  | 2d | 0d | TuanDV | 12h |
| 29 | 1.1.8.2 | Create Project Schedule in .mmp file |  | 2d | 2016-09-14 | 2016-09-16 | 28 | 2d | 0d | TuanDV | 16h |
| 30 | 1.1.8.3 | Create CM Plan |  | 2d | 2016-09-13 | 2016-09-14 |  | 3.5d | 1.5d | NghiaDT | 16h |
| 31 | 1.1.8.4 | Review Project Plan, CMPlan, Schedule |  | 0.5d | 2016-09-16 | 2016-09-16 | 29, 30 | 2d | 0d | NhienLH; TuanHA | 8h |
| 32 | 1.1.8.5 | Update Project Plan, CMPlan, Schedule |  | 0.5d | 2016-09-19 | 2016-09-19 | 31 | 2d | 0d | TuanDV; NghiaDT | 8h |
| 33 | 1.1.8.6 | Complete Project Plan | milestone | 0d | 2016-09-19 | 2016-09-19 | 32 | 2d |  |  |  |
| 34 | 1.1.9 | **User Requirement Specification** |  | 3d | 2016-09-12 | 2016-09-14 | 8 | 4.5d | 2.5d |  | 24h |
| 35 | 1.1.9.1 | Create User Requirement Sepecification |  | 2d | 2016-09-12 | 2016-09-13 |  | 4.5d | 0d | NghiaDT | 16h |
| 36 | 1.1.9.2 | Review User Requirement Specification |  | 0.5d | 2016-09-14 | 2016-09-14 | 35 | 4.5d | 0d | TuanHA | 4h |
| 37 | 1.1.9.3 | Update User Requirement Specification |  | 0.5d | 2016-09-14 | 2016-09-14 | 36 | 4.5d | 0d | NghiaDT | 4h |
| 38 | 1.1.9.4 | Complete User Requirement Specification | milestone | 0d | 2016-09-14 | 2016-09-14 | 37 | 4.5d |  |  |  |
| 39 | 1.1.10 | **Q&A Sheet** |  | 3d | 2016-09-08 | 2016-09-12 |  |  |  |  | 16h |
| 40 | 1.1.10.1 | Create Q&A sheet |  | 1d | 2016-09-08 | 2016-09-08 |  | 1d | 0d | TuanHA | 8h |
| 41 | 1.1.10.2 | Review Q&A sheet |  | 0.5d | 2016-09-09 | 2016-09-09 | 40 | 1d | 0.5d | TuanDV | 4h |
| 42 | 1.1.10.3 | Update Q&A sheet | manual | 0.5d | 2016-09-12 | 2016-09-12 | 41 |  |  | TuanHA | 4h |
| 43 | 1.1.11 | Create progress report 1 |  | 0.5d | 2016-09-19 | 2016-09-19 | 27, 34, 39, 8 | 2d | 0d |  |  |
| 44 | 1.1.12 | Submit progress report 1 | milestone | 0d | 2016-09-19 | 2016-09-19 | 43 | 2d |  |  |  |
| 45 | 1.2 | **Solution** |  | 19d | 2016-09-20 | 2016-10-14 | 2 | 0d |  |  | 724h |
| 46 | 1.2.1 | **Technology** |  | 3d | 2016-09-20 | 2016-09-22 |  | 2d | 0d |  | 56h |
| 47 | 1.2.1.1 | Code first migration |  | 2d | 2016-09-20 | 2016-09-21 |  | 3d |  | NhienLH | 16h |
| 48 | 1.2.1.2 | Restful API on .net MVC |  | 2d | 2016-09-20 | 2016-09-21 |  | 2d | 0d | DevTeam | 16h |
| 49 | 1.2.1.3 | Facebook Login API |  | 1d | 2016-09-22 | 2016-09-22 | 48 | 2d |  | DevTeam | 8h |
| 50 | 1.2.1.4 | Google Login API |  | 1d | 2016-09-22 | 2016-09-22 | 48 | 2d |  | DevTeam | 8h |
| 51 | 1.2.1.5 | Payment by BaoKim API |  | 1d | 2016-09-22 | 2016-09-22 | 48 | 2d |  | DevTeam | 8h |

| ID | WBS | Task | Type | Duration | Start | Finish | Predecessors | Total slack | Free slack | Resources | Work |
| --- | --- | --- | --- | --- | --- | --- | --- | --- | --- | --- | --- |
| 52 | 1.2.2 | **Mock Project, Demo & Prototypes** |  | 7d | 2016-09-23 | 2016-10-03 | 46 | 9d |  |  | 200h |
| 53 | 1.2.2.1 | Create Mock Project |  | 4d | 2016-09-23 | 2016-09-28 |  | 9d | 0d | NghiaDT; TuanHA; DuyTN | 96h |
| 54 | 1.2.2.2 | Create Demo |  | 5d | 2016-09-23 | 2016-09-29 |  | 11d |  | NhienLH; TuanDV | 80h |
| 55 | 1.2.2.3 | Create Prototype |  | 3d | 2016-09-29 | 2016-10-03 | 53 | 9d |  | DesignTeam | 24h |
| 56 | 1.2.3 | **Software Requirement Specification** |  | 4d | 2016-09-22 | 2016-09-27 |  | 0d |  |  | 64h |
| 57 | 1.2.3.1 | **Non-functional Requirements Specification** |  | 2d | 2016-09-22 | 2016-09-23 |  |  |  |  | 32h |
| 58 | 1.2.3.1.1 | Define Security Requirements |  | 1d | 2016-09-22 | 2016-09-22 |  | 1d |  | TuanDV | 8h |
| 59 | 1.2.3.1.2 | Define Performane Requirements |  | 1d | 2016-09-22 | 2016-09-22 |  | 1d |  | NhienLH | 8h |
| 60 | 1.2.3.1.3 | Define User-interface Requirements |  | 2d | 2016-09-22 | 2016-09-23 |  | 0d |  | NghiaDT | 16h |
| 61 | 1.2.3.2 | **Functional Requirements Specification** |  | 2d | 2016-09-26 | 2016-09-27 | 57 |  |  |  | 32h |
| 62 | 1.2.3.2.1 | Define User Client Module functional Requirements |  | 2d | 2016-09-26 | 2016-09-27 |  | 0d |  | TuanHA | 16h |
| 63 | 1.2.3.2.2 | Define Admin Module functional Requirments |  | 2d | 2016-09-26 | 2016-09-27 |  | 0d |  | DuyTN | 16h |
| 64 | 1.2.4 | **System Design** |  | 16d | 2016-09-23 | 2016-10-14 | 46 | 0d |  |  | 404h |
| 65 | 1.2.4.1 | Create design review checklist |  | 1d | 2016-09-23 | 2016-09-23 |  | 2d | 0d | DuyTN | 8h |
| 66 | 1.2.4.2 | **Architectural Design** |  | 8d | 2016-09-26 | 2016-10-05 | 65 | 3d | 0d |  | 76h |
| 67 | 1.2.4.2.1 | Define architectural design |  | 1d | 2016-09-26 | 2016-09-26 |  | 4d | 1d | NghiaDT | 8h |
| 68 | 1.2.4.2.2 | Define system features |  | 2d | 2016-09-26 | 2016-09-27 |  | 3d | 0d | NhienLH | 16h |
| 69 | 1.2.4.2.3 | Study and choose suitable architectural design |  | 2d | 2016-09-28 | 2016-09-29 | 67, 68 | 3d | 0d | Team | 16h |
| 70 | 1.2.4.2.4 | Create Architectural design |  | 3d | 2016-09-30 | 2016-10-04 | 69 | 3d | 0d | Team | 24h |
| 71 | 1.2.4.2.5 | Review architectural design |  | 0.5d | 2016-10-05 | 2016-10-05 | 70 | 3d | 0d | NhienLH; NghiaDT | 8h |
| 72 | 1.2.4.2.6 | Update Architectural Design |  | 0.5d | 2016-10-05 | 2016-10-05 | 71 | 3d | 0d | TuanDV | 4h |
| 73 | 1.2.4.2.7 | Complete Architectural Design | milestone | 0d | 2016-10-05 | 2016-10-05 | 72 | 3d |  |  |  |
| 74 | 1.2.4.3 | **Screen design** |  | 7d | 2016-09-28 | 2016-10-06 | 56 | 6d |  |  | 136h |
| 75 | 1.2.4.3.1 | Create Organization screen design |  | 5d | 2016-09-28 | 2016-10-04 |  | 6d | 0d | DesignTeam | 40h |
| 76 | 1.2.4.3.2 | Create client screen design |  | 5d | 2016-09-28 | 2016-10-04 |  | 6d | 0d | DesignTeam | 40h |
| 77 | 1.2.4.3.3 | Create admin screen design |  | 5d | 2016-09-28 | 2016-10-04 |  | 6d | 0d | DesignTeam | 40h |
| 78 | 1.2.4.3.4 | Review screen design |  | 1d | 2016-10-05 | 2016-10-05 | 76, 77, 75 | 6d | 0d | Team | 8h |
| 79 | 1.2.4.3.5 | Update screen design |  | 1d | 2016-10-06 | 2016-10-06 | 78 | 6d | 0d | DesignTeam | 8h |
| 80 | 1.2.4.3.6 | Complete screen design | milestone | 0d | 2016-10-06 | 2016-10-06 | 79 | 6d |  |  |  |

| ID | WBS | Task | Type | Duration | Start | Finish | Predecessors | Total slack | Free slack | Resources | Work |
| --- | --- | --- | --- | --- | --- | --- | --- | --- | --- | --- | --- |
| 81 | 1.2.4.4 | **Database design** |  | 4d | 2016-10-06 | 2016-10-11 | 66 | 3d |  |  | 32h |
| 82 | 1.2.4.4.1 | Create database design |  | 3d | 2016-10-06 | 2016-10-10 |  | 3d | 0d | NhienLH | 24h |
| 83 | 1.2.4.4.2 | Review database design |  | 0.5d | 2016-10-11 | 2016-10-11 | 82 | 3d | 0d | Team | 4h |
| 84 | 1.2.4.4.3 | Update database design |  | 0.5d | 2016-10-11 | 2016-10-11 | 83 | 3d | 0d | NhienLH | 4h |
| 85 | 1.2.4.4.4 | Complete database design | milestone | 0d | 2016-10-11 | 2016-10-11 | 84 | 3d |  |  |  |
| 86 | 1.2.4.5 | **Class/Component Design** |  | 5d | 2016-09-28 | 2016-10-04 | 56, 65 | 0d |  |  | 64h |
| 87 | 1.2.4.5.1 | Define Class and Component |  | 1d | 2016-09-28 | 2016-09-28 |  | 0d |  | Team | 8h |
| 88 | 1.2.4.5.2 | Create Class/component design |  | 2d | 2016-09-29 | 2016-09-30 | 87 | 0d |  | TuanHA | 16h |
| 89 | 1.2.4.5.3 | Review Class/component design |  | 1d | 2016-10-03 | 2016-10-03 | 88 | 0d |  | DuyTN; NghiaDT; NhienLH; TuanDV | 32h |
| 90 | 1.2.4.5.4 | Update Class/component design |  | 1d | 2016-10-04 | 2016-10-04 | 89 | 0d |  | TuanHA | 8h |
| 91 | 1.2.4.5.5 | Complete Class/component design | milestone | 0d | 2016-10-04 | 2016-10-04 | 90 | 0d |  |  |  |
| 92 | 1.2.4.6 | Create progress report 2 |  | 1d | 2016-10-05 | 2016-10-05 | 86 | 0d |  | DuyTN | 8h |
| 93 | 1.2.4.7 | Submit progress report 2 | milestone | 0d | 2016-10-05 | 2016-10-05 | 92 | 0d |  |  |  |
| 94 | 1.2.4.8 | **Testing** |  | 6d | 2016-10-06 | 2016-10-13 | 93 | 0d |  |  | 72h |
| 95 | 1.2.4.8.1 | Create test plan/case checklists |  | 1d | 2016-10-06 | 2016-10-06 |  | 0d |  | DuyTN | 8h |
| 96 | 1.2.4.8.2 | Create test plan |  | 3d | 2016-10-07 | 2016-10-11 | 95 | 0d |  | TuanDV | 24h |
| 97 | 1.2.4.8.3 | Review test plan |  | 1d | 2016-10-12 | 2016-10-12 | 96 | 0d |  | NghiaDT; NhienLH; TuanHA | 24h |
| 98 | 1.2.4.8.4 | Update test plan |  | 1d | 2016-10-13 | 2016-10-13 | 97 | 0d |  | DuyTN; TuanDV | 16h |
| 99 | 1.2.4.8.5 | Test plan complete | milestone | 0d | 2016-10-13 | 2016-10-13 | 98 | 0d |  |  |  |
| 100 | 1.2.4.9 | Create progress report 3 |  | 1d | 2016-10-14 | 2016-10-14 | 94 | 0d |  | DuyTN | 8h |
| 101 | 1.2.4.10 | Submit progress report 3 | milestone | 0d | 2016-10-14 | 2016-10-14 | 100 | 0d |  |  |  |
| 102 | 1.3 | **Construction** |  | 35d | 2016-10-17 | 2016-12-02 | 45 | 0d |  |  | 752h |
| 103 | 1.3.1 | **Define Coding Standards** |  | 1d | 2016-10-17 | 2016-10-17 |  |  |  |  | 16h |
| 104 | 1.3.1.1 | Create Coding Convention |  | 1d | 2016-10-17 | 2016-10-17 |  | 0d |  | NhienLH | 8h |
| 105 | 1.3.1.2 | Create Code & UT Test review checklist |  | 1d | 2016-10-17 | 2016-10-17 |  | 0d |  | Team | 8h |

| ID | WBS | Task | Type | Duration | Start | Finish | Predecessors | Total slack | Free slack | Constraint | Resources | Work |
| --- | --- | --- | --- | --- | --- | --- | --- | --- | --- | --- | --- | --- |
| 106 | 1.3.2 | **Screen Design** |  | 2d | 2016-10-18 | 2016-10-19 |  |  |  |  |  | 16h |
| 107 | 1.3.2.1 | Refine screen design document and prototype |  | 2d | 2016-10-18 | 2016-10-19 |  | 0d |  |  | Team | 16h |
| 108 | 1.3.3 | **Coding & Unit test** |  | 18d | 2016-10-20 | 2016-11-14 | 106 | 23d | 0d |  |  | 424h |
| 109 | 1.3.3.1 | Structure core modules & source code common |  | 3d | 2016-10-20 | 2016-10-24 |  | 23d | 0d |  | Team | 24h |
| 110 | 1.3.3.2 | **Client User Module** |  | 6d | 2016-10-25 | 2016-11-01 | 109 | 23d | 0d |  |  | 208h |
| 111 | 1.3.3.2.1 | Home Page Module |  | 3d | 2016-10-25 | 2016-10-27 |  | 23d | 0d |  | NghiaDT | 24h |
| 112 | 1.3.3.2.2 | Login/ Logout Module |  | 3d | 2016-10-28 | 2016-11-01 | 111 | 23d |  |  | TuanDV | 24h |
| 113 | 1.3.3.2.3 | Raise a Organization |  | 5d | 2016-10-25 | 2016-10-31 |  | 24d | 0d |  | NhienLH | 40h |
| 114 | 1.3.3.2.4 | View, Comment, Like, Share, Report posts |  | 5d | 2016-10-25 | 2016-10-31 |  | 24d | 0d |  | TuanHA | 40h |
| 115 | 1.3.3.2.5 | Donate |  | 5d | 2016-10-25 | 2016-10-31 |  | 24d |  |  | DuyTN | 40h |
| 116 | 1.3.3.2.6 | Message Module |  | 3d | 2016-10-25 | 2016-10-27 |  | 26d |  |  | NhienLH | 24h |
| 117 | 1.3.3.2.7 | Update Profile |  | 2d | 2016-10-25 | 2016-10-26 |  | 27d |  |  | DuyTN | 16h |
| 118 | 1.3.3.3 | **Organization Module** |  | 9d | 2016-11-02 | 2016-11-14 | 110 | 23d | 0d |  |  | 72h |
| 119 | 1.3.3.3.1 | Create, Manage Activity Charity |  | 6d | 2016-11-02 | 2016-11-09 |  | 23d | 0d |  | NhienLH | 48h |
| 120 | 1.3.3.3.2 | Manage Them Posts |  | 3d | 2016-11-10 | 2016-11-14 | 119 | 23d |  |  | NghiaDT | 24h |
| 121 | 1.3.3.4 | **Admin Module** |  | 18d | 2016-10-20 | 2016-11-14 |  | 23d | 0d |  |  | 120h |
| 122 | 1.3.3.4.1 | Login/ Logout module |  | 3d | 2016-10-20 | 2016-10-24 |  | 38d |  |  | TuanDV | 24h |
| 123 | 1.3.3.4.2 | Manage Users, Organization Module |  | 3d | 2016-11-01 | 2016-11-03 | 113 | 30d |  |  | DuyTN | 24h |
| 124 | 1.3.3.4.3 | Manage Posts Module |  | 3d | 2016-11-10 | 2016-11-14 | 119 | 23d |  |  | TuanHA | 24h |
| 125 | 1.3.3.4.4 | Manage Requests from Users |  | 2d | 2016-11-01 | 2016-11-02 | 113, 114 | 31d |  |  | NghiaDT | 16h |
| 126 | 1.3.3.4.5 | Manage Slider |  | 2d | 2016-11-01 | 2016-11-02 |  | 31d |  | start no earlier than 2016-11-01 | NhienLH | 16h |
| 127 | 1.3.3.4.6 | Message Module |  | 2d | 2016-10-20 | 2016-10-21 |  | 39d |  |  | NhienLH | 16h |
| 128 | 1.3.3.5 | Complete Coding | milestone | 0d | 2016-11-14 | 2016-11-14 | 118, 121 | 23d |  |  |  |  |
| 129 | 1.3.4 | Create Progress Report 4 |  | 1d | 2016-11-15 | 2016-11-15 | 108 | 23d | 0d |  | DuyTN | 8h |
| 130 | 1.3.5 | Submit Progress Report 4 | milestone | 0d | 2016-11-15 | 2016-11-15 | 129 | 23d |  |  |  |  |

| ID | WBS | Task | Type | Duration | Start | Finish | Predecessors | Total slack | Resources | Work |
| --- | --- | --- | --- | --- | --- | --- | --- | --- | --- | --- |
| 131 | 1.3.6 | **Testing** |  | 20d | 2016-11-01 | 2016-11-28 |  |  |  | 256h |
| 132 | 1.3.6.1 | **Writing test case** |  | 10d | 2016-11-01 | 2016-11-14 |  | 0d |  | 80h |
| 133 | 1.3.6.1.1 | **System test case** |  | 5d | 2016-11-01 | 2016-11-07 |  | 0d |  | 40h |
| 134 | 1.3.6.1.1.1 | Create system test case |  | 3d | 2016-11-01 | 2016-11-03 |  | 0d | TestTeam | 24h |
| 135 | 1.3.6.1.1.2 | Review system test case |  | 1d | 2016-11-04 | 2016-11-04 | 134 | 0d | DuyTN | 8h |
| 136 | 1.3.6.1.1.3 | Update system test case |  | 1d | 2016-11-07 | 2016-11-07 | 135 | 0d | TestTeam | 8h |
| 137 | 1.3.6.1.2 | **Integration test case** |  | 5d | 2016-11-08 | 2016-11-14 | 133 | 0d |  | 40h |
| 138 | 1.3.6.1.2.1 | Create integration test case |  | 3d | 2016-11-08 | 2016-11-10 |  | 0d | TestTeam | 24h |
| 139 | 1.3.6.1.2.2 | Review integration test case |  | 1d | 2016-11-11 | 2016-11-11 | 138 | 0d | DuyTN | 8h |
| 140 | 1.3.6.1.2.3 | Update integration test case |  | 1d | 2016-11-14 | 2016-11-14 | 139 | 0d | TestTeam | 8h |
| 141 | 1.3.6.1.3 | Writing test case complete | milestone | 0d | 2016-11-14 | 2016-11-14 | 133, 137 | 0d |  |  |
| 142 | 1.3.6.2 | **Execute Test Round 1** |  | 5d | 2016-11-15 | 2016-11-21 | 141 | 0d |  | 80h |
| 143 | 1.3.6.2.1 | Execute System Test |  | 3d | 2016-11-15 | 2016-11-17 |  | 0d | TestTeam | 24h |
| 144 | 1.3.6.2.2 | Fix bug System Test |  | 2d | 2016-11-18 | 2016-11-21 | 143 | 0d | DevTeam | 16h |
| 145 | 1.3.6.2.3 | Execute Integration Test |  | 3d | 2016-11-15 | 2016-11-17 |  | 0d | TestTeam | 24h |
| 146 | 1.3.6.2.4 | Fix bug Integration Test |  | 2d | 2016-11-18 | 2016-11-21 | 145 | 0d | DevTeam | 16h |
| 147 | 1.3.6.3 | Update Test Case |  | 1d | 2016-11-18 | 2016-11-18 | 143, 145 | 6d | TestTeam | 8h |
| 148 | 1.3.6.4 | **Execute Test Round 2** |  | 5d | 2016-11-22 | 2016-11-28 | 142 | 0d |  | 80h |
| 149 | 1.3.6.4.1 | Execute System Test |  | 3d | 2016-11-22 | 2016-11-24 |  | 0d | TestTeam | 24h |
| 150 | 1.3.6.4.2 | Fix bug System Test |  | 2d | 2016-11-25 | 2016-11-28 | 149 | 0d | DevTeam | 16h |
| 151 | 1.3.6.4.3 | Execute Integration Test |  | 3d | 2016-11-22 | 2016-11-24 |  | 0d | TestTeam | 24h |
| 152 | 1.3.6.4.4 | Fix bug Integration Test |  | 2d | 2016-11-25 | 2016-11-28 | 151 | 0d | DevTeam | 16h |
| 153 | 1.3.6.5 | Update Test Case |  | 1d | 2016-11-25 | 2016-11-25 | 149, 151 | 1d | TestTeam | 8h |
| 154 | 1.3.7 | Testing Complete | milestone | 0d | 2016-11-28 | 2016-11-28 | 148 | 14d |  |  |

| ID | WBS | Task | Type | Duration | Start | Finish | Predecessors | Total slack | Free slack | Resources | Work |
| --- | --- | --- | --- | --- | --- | --- | --- | --- | --- | --- | --- |
| 155 | 1.3.8 | **Quality Control** |  | 3d | 2016-11-29 | 2016-12-01 | 131 | 2d | 0d |  | 24h |
| 156 | 1.3.8.1 | Create Quality Report |  | 2d | 2016-11-29 | 2016-11-30 |  | 2d | 0d | TuanDV | 16h |
| 157 | 1.3.8.2 | Review Quality Report |  | 0.5d | 2016-12-01 | 2016-12-01 | 156 | 2d | 0d | NghiaDT | 4h |
| 158 | 1.3.8.3 | Update Quality Report |  | 0.5d | 2016-12-01 | 2016-12-01 | 157 | 2d |  | TuanDV | 4h |
| 159 | 1.3.9 | Create Progress Report 5 |  | 1d | 2016-12-02 | 2016-12-02 | 155 | 2d | 0d | DuyTN | 8h |
| 160 | 1.3.10 | Submit Progress Report 5 | milestone | 0d | 2016-12-02 | 2016-12-02 | 159 | 10d |  |  |  |
| 161 | 1.4 | **Termination** |  | 10d | 2016-12-05 | 2016-12-16 | 159 | 0d |  |  | 144h |
| 162 | 1.4.1 | Create lesson learned |  | 1d | 2016-12-05 | 2016-12-05 |  | 2d | 0d | Team | 8h |
| 163 | 1.4.2 | **Final Report Document** |  | 2d | 2016-12-06 | 2016-12-07 | 162 | 2d | 0d |  | 80h |
| 164 | 1.4.2.1 | Create Final Report document |  | 2d | 2016-12-06 | 2016-12-07 |  | 2d |  | TuanDV | 16h |
| 165 | 1.4.2.2 | Create Installing Guide |  | 2d | 2016-12-06 | 2016-12-07 |  | 2d |  | NghiaDT | 16h |
| 166 | 1.4.2.3 | Create User Guideline |  | 2d | 2016-12-06 | 2016-12-07 |  | 2d |  | NhienLH | 16h |
| 167 | 1.4.2.4 | Create Project Result Assessment |  | 2d | 2016-12-06 | 2016-12-07 |  | 2d |  | TuanHA | 16h |
| 168 | 1.4.2.5 | Create Slides for Final Presentation |  | 2d | 2016-12-06 | 2016-12-07 |  | 2d |  | Team | 16h |
| 169 | 1.4.3 | Create Progress Report 6 |  | 1d | 2016-12-08 | 2016-12-08 | 163 | 6d | 0d | DuyTN | 8h |
| 170 | 1.4.4 | Submit Progress Report 6 | milestone | 0d | 2016-12-08 | 2016-12-08 | 169 | 6d |  |  |  |
| 171 | 1.4.5 | **Pre-closing** |  | 5d | 2016-12-08 | 2016-12-14 | 163 | 2d |  |  | 40h |
| 172 | 1.4.5.1 | Trainning presentation |  | 5d | 2016-12-08 | 2016-12-14 |  | 2d |  | Team | 40h |
| 173 | 1.4.6 | **Closing** |  | 1d | 2016-12-16 | 2016-12-16 |  |  |  |  | 8h |
| 174 | 1.4.6.1 | Presentation for Capstone Project |  | 1d | 2016-12-16 | 2016-12-16 |  | 0d |  | Team | 8h |
| 175 | 1.4.6.2 | Complete Project | milestone | 0d | 2016-12-16 | 2016-12-16 | 174 | 0d |  |  |  |
