Schedule from MS Project, 2016-09-05 to 2016-12-26.

## Calendars

- Standard: Mon-Fri 08:00-12:00, 13:00-17:00; Sat-Sun off.

## Resources

| Resource |
| --- |
| Team |
| NghiaDT |
| DuyTN |
| DevTeam |
| DesignTeam |
| TuanDV |
| NhienLH |
| TuanHA |
| 49 |
| TestTeam |

## Schedule

| ID | WBS | Task | Type | Duration | Start | Finish | Predecessors | Total slack | Free slack | Resources | Work |
| --- | --- | --- | --- | --- | --- | --- | --- | --- | --- | --- | --- |
| 1 | 1 | **WingS (WS)** |  | 81d | 2016-09-05 | 2016-12-26 |  | 0d |  |  | 1896h |
| 2 | 1.1 | **Initiation** |  | 10d | 2016-09-05 | 2016-09-16 |  |  |  |  | 292h |
| 3 | 1.1.1 | Form up team roles |  | 0.5d | 2016-09-05 | 2016-09-05 |  | 9d | 0d | Team | 4h |
| 4 | 1.1.2 | Select project idea |  | 0.5d | 2016-09-05 | 2016-09-05 | 3 | 9d |  | Team | 4h |
| 5 | 1.1.3 | **Develop project idea** |  | 1d | 2016-09-06 | 2016-09-06 |  |  |  |  | 8h |
| 6 | 1.1.3.1 | Define project scope |  | 0.5d | 2016-09-06 | 2016-09-06 |  | 0d |  | Team | 4h |
| 7 | 1.1.3.2 | Define project features |  | 0.5d | 2016-09-06 | 2016-09-06 | 6 | 0d |  | Team | 4h |
| 8 | 1.1.4 | Kick-off meeting |  | 1d | 2016-09-07 | 2016-09-07 | 5 | 0d |  | Team | 8h |
| 9 | 1.1.5 | **Environment** |  | 2d | 2016-09-08 | 2016-09-09 | 8 | 0d |  |  | 16h |
| 10 | 1.1.5.1 | Create guideline to install and use tools & environments |  | 0.5d | 2016-09-08 | 2016-09-08 |  | 0d |  | NghiaDT | 4h |
| 11 | 1.1.5.2 | **Install tools & environments** |  | 1d | 2016-09-08 | 2016-09-09 | 10 | 0d |  |  | 8h |
| 12 | 1.1.5.2.1 | Install TortoiseGit |  | 0.5h | 2016-09-08 | 2016-09-08 |  | 0d |  | Team | 0.5h |
| 13 | 1.1.5.2.2 | Install Github Destop |  | 0.5h | 2016-09-08 | 2016-09-08 | 12 | 0d |  | Team | 0.5h |
| 14 | 1.1.5.2.3 | Install Visual Studio 2013 |  | 3h | 2016-09-08 | 2016-09-08 | 13 | 0d |  | Team | 3h |
| 15 | 1.1.5.2.4 | Install Microsoft SQL Server 2008 |  | 2h | 2016-09-09 | 2016-09-09 | 14 | 0d |  | Team | 2h |
| 16 | 1.1.5.2.5 | Install Microsoft Project 2013 |  | 2h | 2016-09-09 | 2016-09-09 | 15 | 0d |  | Team | 2h |
| 17 | 1.1.5.3 | Trainning using tools & environments |  | 0.5d | 2016-09-09 | 2016-09-09 | 11 | 0d |  | Team | 4h |
| 18 | 1.1.5.4 | Complete trainning using tools & environments process | milestone | 0d | 2016-09-09 | 2016-09-09 | 17 | 0d |  |  |  |
| 19 | 1.1.6 | **Technology Research** |  | 5d | 2016-09-12 | 2016-09-16 | 9 | 0d |  |  | 120h |
| 20 | 1.1.6.1 | Study .net MVC 5 |  | 5d | 2016-09-12 | 2016-09-16 |  | 0d |  | DevTeam | 40h |
| 21 | 1.1.6.2 | Study AngularJS, Ajax, Javascript |  | 5d | 2016-09-12 | 2016-09-16 |  | 0d |  | DevTeam | 40h |
| 22 | 1.1.6.3 | Study Bootstraps, HTML5, CSS3 |  | 5d | 2016-09-12 | 2016-09-16 |  | 0d |  | DesignTeam | 40h |
| 23 | 1.1.7 | SRS/PP Review checklist | manual | 0.5d | 2016-09-08 | 2016-09-08 | 8 |  |  | DuyTN | 4h |
| 24 | 1.1.8 | **Project Introduction** |  | 3d | 2016-09-08 | 2016-09-13 | 23 | 0d |  |  | 24h |
| 25 | 1.1.8.1 | Create Project Introduction |  | 2d | 2016-09-08 | 2016-09-12 |  | 0d |  | DuyTN | 16h |
| 26 | 1.1.8.2 | Review Project Introduction |  | 0.5d | 2016-09-12 | 2016-09-12 | 25 | 0d |  | NghiaDT | 4h |
| 27 | 1.1.8.3 | Update Project Introduction |  | 0.5d | 2016-09-13 | 2016-09-13 | 26 | 0d |  | DuyTN | 4h |
| 28 | 1.1.8.4 | Complete Project Introduction | milestone | 0d | 2016-09-13 | 2016-09-13 | 27 | 0d |  |  |  |

| ID | WBS | Task | Type | Duration | Start | Finish | Predecessors | Total slack | Free slack | Resources | Work |
| --- | --- | --- | --- | --- | --- | --- | --- | --- | --- | --- | --- |
| 29 | 1.1.9 | **Project Plan** |  | 5d | 2016-09-08 | 2016-09-15 | 23 | 1d |  |  | 64h |
| 30 | 1.1.9.1 | Create Project Plan in MS Word |  | 2d | 2016-09-08 | 2016-09-12 |  | 1d | 0d | TuanDV | 16h |
| 31 | 1.1.9.2 | Create Project Schedule in .mmp file |  | 2d | 2016-09-12 | 2016-09-14 | 30 | 1d | 0d | TuanDV | 16h |
| 32 | 1.1.9.3 | Create CM Plan |  | 2d | 2016-09-08 | 2016-09-12 |  | 3d | 2d | NghiaDT | 16h |
| 33 | 1.1.9.4 | Review Project Plan, CMPlan, Schedule |  | 0.5d | 2016-09-14 | 2016-09-14 | 31, 32 | 1d | 0d | NhienLH; TuanHA | 8h |
| 34 | 1.1.9.5 | Update Project Plan, CMPlan, Schedule |  | 0.5d | 2016-09-15 | 2016-09-15 | 33 | 1d | 0d | TuanDV; NghiaDT | 8h |
| 35 | 1.1.9.6 | Complete Project Plan | milestone | 0d | 2016-09-15 | 2016-09-15 | 34 | 1d |  |  |  |
| 36 | 1.1.10 | **User Requirement Specification** |  | 3d | 2016-09-13 | 2016-09-16 | 24 | 0d |  |  | 24h |
| 37 | 1.1.10.1 | Create User Requirement Sepecification |  | 2d | 2016-09-13 | 2016-09-15 |  | 0d |  | NghiaDT | 16h |
| 38 | 1.1.10.2 | Review User Requirement Specification |  | 0.5d | 2016-09-15 | 2016-09-15 | 37 | 0d |  | TuanHA | 4h |
| 39 | 1.1.10.3 | Update User Requirement Specification |  | 0.5d | 2016-09-16 | 2016-09-16 | 38 | 0d |  | NghiaDT | 4h |
| 40 | 1.1.10.4 | Complete User Requirement Specification | milestone | 0d | 2016-09-16 | 2016-09-16 | 39 | 0d |  |  |  |
| 41 | 1.1.11 | **Q&A Sheet** |  | 2d | 2016-09-08 | 2016-09-12 | 23 | 1.5d |  |  | 16h |
| 42 | 1.1.11.1 | Create Q&A sheet |  | 1d | 2016-09-08 | 2016-09-09 |  | 4d | 0d | TuanHA | 8h |
| 43 | 1.1.11.2 | Review Q&A sheet |  | 0.5d | 2016-09-09 | 2016-09-09 | 42 | 4d | 0d | TuanDV | 4h |
| 44 | 1.1.11.3 | Update Q&A sheet | manual | 0.5d | 2016-09-12 | 2016-09-12 | 43 |  |  | TuanHA | 4h |
| 45 | 1.1.12 | Create progress report 1 |  | 0.5d | 2016-09-16 | 2016-09-16 | 24, 29, 36, 41 | 0d |  |  |  |
| 46 | 1.1.13 | Submit progress report 1 | milestone | 0d | 2016-09-16 | 2016-09-16 | 45 | 0d |  |  |  |
| 47 | 1.2 | **Solution** |  | 20d | 2016-09-19 | 2016-10-14 | 2 | 0d |  |  | 724h |
| 48 | 1.2.1 | **Technology** |  | 3d | 2016-09-19 | 2016-09-21 |  | 3d | 0d |  | 56h |
| 49 | 1.2.1.1 | Code first migration |  | 2d | 2016-09-19 | 2016-09-20 |  | 4d |  | NhienLH | 16h |
| 50 | 1.2.1.2 | Restful API on .net MVC |  | 2d | 2016-09-19 | 2016-09-20 |  | 3d | 0d | DevTeam | 16h |
| 51 | 1.2.1.3 | Facebook Login API |  | 1d | 2016-09-21 | 2016-09-21 | 50 | 3d |  | DevTeam | 8h |
| 52 | 1.2.1.4 | Google Login API |  | 1d | 2016-09-21 | 2016-09-21 | 50 | 3d |  | DevTeam | 8h |
| 53 | 1.2.1.5 | Payment by BaoKim API |  | 1d | 2016-09-21 | 2016-09-21 | 50 | 3d |  | DevTeam | 8h |

| ID | WBS | Task | Type | Duration | Start | Finish | Predecessors | Total slack | Free slack | Resources | Work |
| --- | --- | --- | --- | --- | --- | --- | --- | --- | --- | --- | --- |
| 54 | 1.2.2 | **Mock Project, Demo & Prototypes** |  | 7d | 2016-09-22 | 2016-09-30 | 48 | 10d |  |  | 200h |
| 55 | 1.2.2.1 | Create Mock Project |  | 4d | 2016-09-22 | 2016-09-27 |  | 10d | 0d | NghiaDT; TuanHA; DuyTN | 96h |
| 56 | 1.2.2.2 | Create Demo |  | 5d | 2016-09-22 | 2016-09-28 |  | 12d |  | NhienLH; TuanDV | 80h |
| 57 | 1.2.2.3 | Create Prototype |  | 3d | 2016-09-28 | 2016-09-30 | 55 | 10d |  | DesignTeam | 24h |
| 58 | 1.2.3 | **Software Requirement Specification** |  | 4d | 2016-09-22 | 2016-09-27 |  | 0d |  |  | 64h |
| 59 | 1.2.3.1 | **Non-functional Requirements Specification** |  | 2d | 2016-09-22 | 2016-09-23 |  |  |  |  | 32h |
| 60 | 1.2.3.1.1 | Define Security Requirements |  | 1d | 2016-09-22 | 2016-09-22 |  | 1d |  | TuanDV | 8h |
| 61 | 1.2.3.1.2 | Define Performane Requirements |  | 1d | 2016-09-22 | 2016-09-22 |  | 1d |  | NhienLH | 8h |
| 62 | 1.2.3.1.3 | Define User-interface Requirements |  | 2d | 2016-09-22 | 2016-09-23 |  | 0d |  | NghiaDT | 16h |
| 63 | 1.2.3.2 | **Functional Requirements Specification** |  | 2d | 2016-09-26 | 2016-09-27 | 59 |  |  |  | 32h |
| 64 | 1.2.3.2.1 | Define User Client Module functional Requirements |  | 2d | 2016-09-26 | 2016-09-27 |  | 0d |  | TuanHA | 16h |
| 65 | 1.2.3.2.2 | Define Admin Module functional Requirments |  | 2d | 2016-09-26 | 2016-09-27 |  | 0d |  | DuyTN | 16h |
| 66 | 1.2.4 | **System Design** |  | 17d | 2016-09-22 | 2016-10-14 | 48 | 0d |  |  | 404h |
| 67 | 1.2.4.1 | Create design review checklist |  | 1d | 2016-09-22 | 2016-09-22 |  | 3d | 0d | DuyTN | 8h |
| 68 | 1.2.4.2 | **Architectural Design** |  | 8d | 2016-09-23 | 2016-10-04 | 67 | 4d | 0d |  | 76h |
| 69 | 1.2.4.2.1 | Define architectural design |  | 1d | 2016-09-23 | 2016-09-23 |  | 5d | 1d | NghiaDT | 8h |
| 70 | 1.2.4.2.2 | Define system features |  | 2d | 2016-09-23 | 2016-09-26 |  | 4d | 0d | NhienLH | 16h |
| 71 | 1.2.4.2.3 | Study and choose suitable architectural design |  | 2d | 2016-09-27 | 2016-09-28 | 69, 70 | 4d | 0d | Team | 16h |
| 72 | 1.2.4.2.4 | Create Architectural design |  | 3d | 2016-09-29 | 2016-10-03 | 71 | 4d | 0d | Team | 24h |
| 73 | 1.2.4.2.5 | Review architectural design |  | 0.5d | 2016-10-04 | 2016-10-04 | 72 | 4d | 0d | NhienLH; NghiaDT | 8h |
| 74 | 1.2.4.2.6 | Update Architectural Design |  | 0.5d | 2016-10-04 | 2016-10-04 | 73 | 4d | 0d | TuanDV | 4h |
| 75 | 1.2.4.2.7 | Complete Architectural Design | milestone | 0d | 2016-10-04 | 2016-10-04 | 74 | 4d |  |  |  |
| 76 | 1.2.4.3 | **Screen design** |  | 7d | 2016-09-28 | 2016-10-06 | 58 | 6d |  |  | 136h |
| 77 | 1.2.4.3.1 | Create Organization screen design |  | 5d | 2016-09-28 | 2016-10-04 |  | 6d | 0d | DesignTeam | 40h |
| 78 | 1.2.4.3.2 | Create client screen design |  | 5d | 2016-09-28 | 2016-10-04 |  | 6d | 0d | DesignTeam | 40h |
| 79 | 1.2.4.3.3 | Create admin screen design |  | 5d | 2016-09-28 | 2016-10-04 |  | 6d | 0d | DesignTeam | 40h |
| 80 | 1.2.4.3.4 | Review screen design |  | 1d | 2016-10-05 | 2016-10-05 | 78, 79, 77 | 6d | 0d | Team | 8h |
| 81 | 1.2.4.3.5 | Update screen design |  | 1d | 2016-10-06 | 2016-10-06 | 80 | 6d | 0d | DesignTeam | 8h |
| 82 | 1.2.4.3.6 | Complete screen design | milestone | 0d | 2016-10-06 | 2016-10-06 | 81 | 6d |  |  |  |

| ID | WBS | Task | Type | Duration | Start | Finish | Predecessors | Total slack | Free slack | Resources | Work |
| --- | --- | --- | --- | --- | --- | --- | --- | --- | --- | --- | --- |
| 83 | 1.2.4.4 | **Database design** |  | 4d | 2016-10-05 | 2016-10-10 | 68 | 4d |  |  | 32h |
| 84 | 1.2.4.4.1 | Create database design |  | 3d | 2016-10-05 | 2016-10-07 |  | 4d | 0d | NhienLH | 24h |
| 85 | 1.2.4.4.2 | Review database design |  | 0.5d | 2016-10-10 | 2016-10-10 | 84 | 4d | 0d | Team | 4h |
| 86 | 1.2.4.4.3 | Update database design |  | 0.5d | 2016-10-10 | 2016-10-10 | 85 | 4d | 0d | NhienLH | 4h |
| 87 | 1.2.4.4.4 | Complete database design | milestone | 0d | 2016-10-10 | 2016-10-10 | 86 | 4d |  |  |  |
| 88 | 1.2.4.5 | **Class/Component Design** |  | 5d | 2016-09-28 | 2016-10-04 | 58, 67 | 0d |  |  | 64h |
| 89 | 1.2.4.5.1 | Define Class and Component |  | 1d | 2016-09-28 | 2016-09-28 |  | 0d |  | Team | 8h |
| 90 | 1.2.4.5.2 | Create Class/component design |  | 2d | 2016-09-29 | 2016-09-30 | 89 | 0d |  | TuanHA | 16h |
| 91 | 1.2.4.5.3 | Review Class/component design |  | 1d | 2016-10-03 | 2016-10-03 | 90 | 0d |  | DuyTN; NghiaDT; NhienLH; TuanDV | 32h |
| 92 | 1.2.4.5.4 | Update Class/component design |  | 1d | 2016-10-04 | 2016-10-04 | 91 | 0d |  | TuanHA | 8h |
| 93 | 1.2.4.5.5 | Complete Class/component design | milestone | 0d | 2016-10-04 | 2016-10-04 | 92 | 0d |  |  |  |
| 94 | 1.2.4.6 | Create progress report 2 |  | 1d | 2016-10-05 | 2016-10-05 | 88 | 0d |  | DuyTN | 8h |
| 95 | 1.2.4.7 | Submit progress report 2 | milestone | 0d | 2016-10-05 | 2016-10-05 | 94 | 0d |  |  |  |
| 96 | 1.2.4.8 | **Testing** |  | 6d | 2016-10-06 | 2016-10-13 | 95 | 0d |  |  | 72h |
| 97 | 1.2.4.8.1 | Create test plan/case checklists |  | 1d | 2016-10-06 | 2016-10-06 |  | 0d |  | DuyTN | 8h |
| 98 | 1.2.4.8.2 | Create test plan |  | 3d | 2016-10-07 | 2016-10-11 | 97 | 0d |  | TuanDV | 24h |
| 99 | 1.2.4.8.3 | Review test plan |  | 1d | 2016-10-12 | 2016-10-12 | 98 | 0d |  | NghiaDT; NhienLH; TuanHA | 24h |
| 100 | 1.2.4.8.4 | Update test plan |  | 1d | 2016-10-13 | 2016-10-13 | 99 | 0d |  | DuyTN; TuanDV | 16h |
| 101 | 1.2.4.8.5 | Test plan complete | milestone | 0d | 2016-10-13 | 2016-10-13 | 100 | 0d |  |  |  |
| 102 | 1.2.4.9 | Create progress report 3 |  | 1d | 2016-10-14 | 2016-10-14 | 96 | 0d |  | DuyTN | 8h |
| 103 | 1.2.4.10 | Submit progress report 3 | milestone | 0d | 2016-10-14 | 2016-10-14 | 102 | 0d |  |  |  |
| 104 | 1.3 | **Construction** |  | 35d | 2016-10-17 | 2016-12-02 | 47 | 0d |  |  | 736h |
| 105 | 1.3.1 | **Define Coding Standards** |  | 1d | 2016-10-17 | 2016-10-17 |  |  |  |  | 16h |
| 106 | 1.3.1.1 | Create Coding Convention |  | 1d | 2016-10-17 | 2016-10-17 |  | 0d |  | NhienLH | 8h |
| 107 | 1.3.1.2 | Create Code & UT Test review checklist |  | 1d | 2016-10-17 | 2016-10-17 |  | 0d |  | Team | 8h |

| ID | WBS | Task | Type | Duration | Start | Finish | Predecessors | Total slack | Free slack | Resources | Work |
| --- | --- | --- | --- | --- | --- | --- | --- | --- | --- | --- | --- |
| 108 | 1.3.2 | **Screen Design** |  | 2d | 2016-10-18 | 2016-10-19 |  |  |  |  | 16h |
| 109 | 1.3.2.1 | Refine screen design document and prototype |  | 2d | 2016-10-18 | 2016-10-19 |  | 0d |  | Team | 16h |
| 110 | 1.3.3 | **Coding & Unit test** |  | 18d | 2016-10-20 | 2016-11-14 | 108 | 29d | 0d |  | 408h |
| 111 | 1.3.3.1 | Structure core modules & source code common |  | 3d | 2016-10-20 | 2016-10-24 |  | 29d | 0d | Team | 24h |
| 112 | 1.3.3.2 | **Client User Module** |  | 6d | 2016-10-25 | 2016-11-01 | 111 | 29d | 0d |  | 208h |
| 113 | 1.3.3.2.1 | Home Page Module |  | 3d | 2016-10-25 | 2016-10-27 |  | 29d | 0d | NghiaDT | 24h |
| 114 | 1.3.3.2.2 | Login/ Logout Module |  | 3d | 2016-10-28 | 2016-11-01 | 113 | 29d |  | TuanDV | 24h |
| 115 | 1.3.3.2.3 | Raise, Join a Organization |  | 5d | 2016-10-25 | 2016-10-31 |  | 30d | 0d | NhienLH | 40h |
| 116 | 1.3.3.2.4 | View, Comment, Like, Share, Report posts |  | 5d | 2016-10-25 | 2016-10-31 |  | 30d | 0d | TuanHA | 40h |
| 117 | 1.3.3.2.5 | Donate |  | 5d | 2016-10-25 | 2016-10-31 |  | 30d |  | DuyTN | 40h |
| 118 | 1.3.3.2.6 | Message Module |  | 3d | 2016-10-25 | 2016-10-27 |  | 32d |  | NhienLH | 24h |
| 119 | 1.3.3.2.7 | Update Profile |  | 2d | 2016-10-25 | 2016-10-26 |  | 33d |  | DuyTN | 16h |
| 120 | 1.3.3.3 | **Organization Module** |  | 9d | 2016-11-02 | 2016-11-14 | 112 | 29d | 0d |  | 72h |
| 121 | 1.3.3.3.1 | Create, Manage Activity Charity |  | 6d | 2016-11-02 | 2016-11-09 |  | 29d | 0d | NhienLH | 48h |
| 122 | 1.3.3.3.2 | Manage Them Posts |  | 3d | 2016-11-10 | 2016-11-14 | 121 | 29d |  | NghiaDT | 24h |
| 123 | 1.3.3.4 | **Admin Module** |  | 18d | 2016-10-20 | 2016-11-14 |  | 29d | 0d |  | 104h |
| 124 | 1.3.3.4.1 | Login/ Logout module |  | 3d | 2016-10-20 | 2016-10-24 |  | 44d |  | TuanDV | 24h |
| 125 | 1.3.3.4.2 | Manage Users, Organization Module |  | 3d | 2016-11-01 | 2016-11-03 | 115 | 36d |  | DuyTN | 24h |
| 126 | 1.3.3.4.3 | Manage Posts Module |  | 3d | 2016-11-10 | 2016-11-14 | 121 | 29d |  | TuanHA | 24h |
| 127 | 1.3.3.4.4 | Manage Requests from Users |  | 2d | 2016-11-01 | 2016-11-02 | 115, 116 | 37d |  | NghiaDT | 16h |
| 128 | 1.3.3.4.5 | Message Module |  | 2d | 2016-10-20 | 2016-10-21 |  | 45d |  | NhienLH | 16h |
| 129 | 1.3.3.5 | Complete Coding | milestone | 0d | 2016-11-14 | 2016-11-14 | 120, 123 | 29d |  |  |  |
| 130 | 1.3.4 | Create Progress Report 4 |  | 1d | 2016-11-15 | 2016-11-15 | 110 | 29d | 0d | DuyTN | 8h |
| 131 | 1.3.5 | Submit Progress Report 4 | milestone | 0d | 2016-11-15 | 2016-11-15 | 130 | 29d |  |  |  |

| ID | WBS | Task | Type | Duration | Start | Finish | Predecessors | Total slack | Resources | Work |
| --- | --- | --- | --- | --- | --- | --- | --- | --- | --- | --- |
| 132 | 1.3.6 | **Testing** |  | 20d | 2016-11-01 | 2016-11-28 |  |  |  | 256h |
| 133 | 1.3.6.1 | **Writing test case** |  | 10d | 2016-11-01 | 2016-11-14 |  | 0d |  | 80h |
| 134 | 1.3.6.1.1 | **System test case** |  | 5d | 2016-11-01 | 2016-11-07 |  | 0d |  | 40h |
| 135 | 1.3.6.1.1.1 | Create system test case |  | 3d | 2016-11-01 | 2016-11-03 |  | 0d | TestTeam | 24h |
| 136 | 1.3.6.1.1.2 | Review system test case |  | 1d | 2016-11-04 | 2016-11-04 | 135 | 0d | DuyTN | 8h |
| 137 | 1.3.6.1.1.3 | Update system test case |  | 1d | 2016-11-07 | 2016-11-07 | 136 | 0d | TestTeam | 8h |
| 138 | 1.3.6.1.2 | **Integration test case** |  | 5d | 2016-11-08 | 2016-11-14 | 134 | 0d |  | 40h |
| 139 | 1.3.6.1.2.1 | Create integration test case |  | 3d | 2016-11-08 | 2016-11-10 |  | 0d | TestTeam | 24h |
| 140 | 1.3.6.1.2.2 | Review integration test case |  | 1d | 2016-11-11 | 2016-11-11 | 139 | 0d | DuyTN | 8h |
| 141 | 1.3.6.1.2.3 | Update integration test case |  | 1d | 2016-11-14 | 2016-11-14 | 140 | 0d | TestTeam | 8h |
| 142 | 1.3.6.1.3 | Writing test case complete | milestone | 0d | 2016-11-14 | 2016-11-14 | 134, 138 | 0d |  |  |
| 143 | 1.3.6.2 | **Execute Test Round 1** |  | 5d | 2016-11-15 | 2016-11-21 | 142 | 0d |  | 80h |
| 144 | 1.3.6.2.1 | Execute System Test |  | 3d | 2016-11-15 | 2016-11-17 |  | 0d | TestTeam | 24h |
| 145 | 1.3.6.2.2 | Fix bug System Test |  | 2d | 2016-11-18 | 2016-11-21 | 144 | 0d | DevTeam | 16h |
| 146 | 1.3.6.2.3 | Execute Integration Test |  | 3d | 2016-11-15 | 2016-11-17 |  | 0d | TestTeam | 24h |
| 147 | 1.3.6.2.4 | Fix bug Integration Test |  | 2d | 2016-11-18 | 2016-11-21 | 146 | 0d | DevTeam | 16h |
| 148 | 1.3.6.3 | Update Test Case |  | 1d | 2016-11-18 | 2016-11-18 | 144, 146 | 6d | TestTeam | 8h |
| 149 | 1.3.6.4 | **Execute Test Round 2** |  | 5d | 2016-11-22 | 2016-11-28 | 143 | 0d |  | 80h |
| 150 | 1.3.6.4.1 | Execute System Test |  | 3d | 2016-11-22 | 2016-11-24 |  | 0d | TestTeam | 24h |
| 151 | 1.3.6.4.2 | Fix bug System Test |  | 2d | 2016-11-25 | 2016-11-28 | 150 | 0d | DevTeam | 16h |
| 152 | 1.3.6.4.3 | Execute Integration Test |  | 3d | 2016-11-22 | 2016-11-24 |  | 0d | TestTeam | 24h |
| 153 | 1.3.6.4.4 | Fix bug Integration Test |  | 2d | 2016-11-25 | 2016-11-28 | 152 | 0d | DevTeam | 16h |
| 154 | 1.3.6.5 | Update Test Case |  | 1d | 2016-11-25 | 2016-11-25 | 150, 152 | 1d | TestTeam | 8h |
| 155 | 1.3.7 | Testing Complete | milestone | 0d | 2016-11-28 | 2016-11-28 | 149 | 20d |  |  |

| ID | WBS | Task | Type | Duration | Start | Finish | Predecessors | Total slack | Free slack | Resources | Work |
| --- | --- | --- | --- | --- | --- | --- | --- | --- | --- | --- | --- |
| 156 | 1.3.8 | **Quality Control** |  | 3d | 2016-11-29 | 2016-12-01 | 132 | 8d | 0d |  | 24h |
| 157 | 1.3.8.1 | Create Quality Report |  | 2d | 2016-11-29 | 2016-11-30 |  | 8d | 0d | TuanDV | 16h |
| 158 | 1.3.8.2 | Review Quality Report |  | 0.5d | 2016-12-01 | 2016-12-01 | 157 | 8d | 0d | NghiaDT | 4h |
| 159 | 1.3.8.3 | Update Quality Report |  | 0.5d | 2016-12-01 | 2016-12-01 | 158 | 8d |  | TuanDV | 4h |
| 160 | 1.3.9 | Create Progress Report 5 |  | 1d | 2016-12-02 | 2016-12-02 | 156 | 8d | 0d | DuyTN | 8h |
| 161 | 1.3.10 | Submit Progress Report 5 | milestone | 0d | 2016-12-02 | 2016-12-02 | 160 | 16d |  |  |  |
| 162 | 1.4 | **Termination** |  | 16d | 2016-12-05 | 2016-12-26 | 160 | 0d |  |  | 144h |
| 163 | 1.4.1 | Create lesson learned |  | 1d | 2016-12-05 | 2016-12-05 |  | 8d | 0d | Team | 8h |
| 164 | 1.4.2 | **Final Report Document** |  | 2d | 2016-12-06 | 2016-12-07 | 163 | 8d | 0d |  | 80h |
| 165 | 1.4.2.1 | Create Final Report document |  | 2d | 2016-12-06 | 2016-12-07 |  | 8d |  | TuanDV | 16h |
| 166 | 1.4.2.2 | Create Installing Guide |  | 2d | 2016-12-06 | 2016-12-07 |  | 8d |  | NghiaDT | 16h |
| 167 | 1.4.2.3 | Create User Guideline |  | 2d | 2016-12-06 | 2016-12-07 |  | 8d |  | NhienLH | 16h |
| 168 | 1.4.2.4 | Create Project Result Assessment |  | 2d | 2016-12-06 | 2016-12-07 |  | 8d |  | TuanHA | 16h |
| 169 | 1.4.2.5 | Create Slides for Final Presentation |  | 2d | 2016-12-06 | 2016-12-07 |  | 8d |  | Team | 16h |
| 170 | 1.4.3 | Create Progress Report 6 |  | 1d | 2016-12-08 | 2016-12-08 | 164 | 12d | 0d | DuyTN | 8h |
| 171 | 1.4.4 | Submit Progress Report 6 | milestone | 0d | 2016-12-08 | 2016-12-08 | 170 | 12d |  |  |  |
| 172 | 1.4.5 | **Pre-closing** |  | 5d | 2016-12-08 | 2016-12-14 | 164 | 8d |  |  | 40h |
| 173 | 1.4.5.1 | Trainning presentation |  | 5d | 2016-12-08 | 2016-12-14 |  | 8d |  | Team | 40h |
| 174 | 1.4.6 | **Closing** |  | 1d | 2016-12-26 | 2016-12-26 |  |  |  |  | 8h |
| 175 | 1.4.6.1 | Presentation for Capstone Project |  | 1d | 2016-12-26 | 2016-12-26 |  | 0d |  | Team | 8h |
| 176 | 1.4.6.2 | Complete Project | milestone | 0d | 2016-12-26 | 2016-12-26 |  | 1d |  |  |  |
